# Nuevo Gantt Glow Girl

Schedule from MS Project, 2026-07-21 to 2026-11-30, costs in $, A marks actual dates.

## Calendars

- Estándar: Mon-Fri 09:00-13:00, 15:00-19:00; Sat-Sun off. Exceptions (off unless hours are given): 2026-08-15 09:00-13:00, 15:00-19:00, 2026-09-20 09:00-13:00, 15:00-19:00.

## Resources

| Resource | Rate |
| --- | --- |
| PROJECT MANAGER | 34588 |
| Coordinador del proyecto | 25941 |
| Analista 1 | 16141 |
| Analista 2 | 16141 |
| Arquitecto 1 | 19023 |
| Arquitecto 2 | 19023 |
| Desarrollador Backend | 23058 |
| Desarrollador Frontend | 18447 |
| Tester | 20176 |

## Schedule

| ID | WBS | Task | Duration | Start | Finish | Predecessors | Complete | Remaining | Total slack | Constraint | Resources | Work | Actual work | Cost | Actual cost |
| --- | --- | --- | --- | --- | --- | --- | --- | --- | --- | --- | --- | --- | --- | --- | --- |
| 1 | 1 | **ANÁLISIS** | 23d | 2026-07-21 A | 2026-08-19 A |  | 100% |  |  |  | PROJECT MANAGER | 360h | 360h | 10,600,064 | 10,600,064 |
| 2 | 1.1 | Entrevista con el cliente | 2d | 2026-07-21 A | 2026-07-22 A |  | 100% |  |  | finish no earlier than 2026-07-22 | PROJECT MANAGER | 16h | 16h | 553,408 | 553,408 |
| 3 | 1.2 | Recolección de información | 5d | 2026-07-23 A | 2026-07-29 A | 2 | 100% |  |  | finish no earlier than 2026-07-29 | Coordinador del proyecto [50%]; Analista 1 [50%] | 40h | 40h | 841,640 | 841,640 |
| 4 | 1.3 | Análisis de la información | 4d | 2026-07-30 A | 2026-08-04 A | 3 | 100% |  |  | finish no earlier than 2026-08-04 | Analista 1 | 32h | 32h | 516,512 | 516,512 |
| 5 | 1.4 | Definición de objetivos del proyecto | 4d | 2026-08-05 A | 2026-08-10 A |  | 100% |  |  | finish no earlier than 2026-08-10 | PROJECT MANAGER | 32h | 32h | 1,106,816 | 1,106,816 |
| 6 | 1.5 | Identificación y análisis del problema | 3d | 2026-08-11 A | 2026-08-13 A | 5 | 100% |  |  | finish no earlier than 2026-08-13 | Coordinador del proyecto | 24h | 24h | 622,584 | 622,584 |
| 7 | 1.6 | Definición del alcance | 2d | 2026-08-15 A | 2026-08-17 A |  | 100% |  |  | finish no earlier than 2026-08-17 | Analista 1 | 16h | 16h | 258,256 | 258,256 |
| 8 | 1.7 | Requerimientos funcionales | 1d | 2026-08-18 A | 2026-08-18 A |  | 100% |  |  | start no earlier than 2026-08-18 | Coordinador del proyecto | 8h | 8h | 207,528 | 207,528 |
| 9 | 1.8 | Requerimientos no funcionales | 1d | 2026-08-19 A | 2026-08-19 A |  | 100% |  |  | start no earlier than 2026-08-19 | Analista 1 | 8h | 8h | 129,128 | 129,128 |
| 10 | 2 | **DISEÑO** | 24d | 2026-08-20 A | 2026-09-21 |  | 83% | 4d | 50d |  | PROJECT MANAGER | 384h | 322.19h | 10,297,952 | 8,658,205.37 |
| 11 | 2.1 | Diseño de arquitectura del sistema | 4d | 2026-08-20 A | 2026-08-25 A |  | 100% |  |  | start no earlier than 2026-08-20 | Analista 2 | 32h | 32h | 516,512 | 516,512 |
| 12 | 2.2 | Diagrama de casos de uso | 3d | 2026-08-26 A | 2026-08-28 A |  | 100% |  |  | finish no earlier than 2026-08-28 | Coordinador del proyecto | 24h | 24h | 622,584 | 622,584 |
| 13 | 2.3 | Diagrama de clases | 3d | 2026-08-31 A | 2026-09-02 A |  | 100% |  |  | finish no earlier than 2026-09-02 | Analista 1 | 24h | 24h | 387,384 | 387,384 |
| 14 | 2.4 | Diagrama de componentes | 2d | 2026-09-03 A | 2026-09-04 A |  | 100% |  |  | finish no earlier than 2026-09-04 | Arquitecto 1 | 16h | 16h | 304,368 | 304,368 |
| 15 | 2.5 | Diagrama de despliegue | 2d | 2026-09-07 A | 2026-09-08 A |  | 100% |  |  | finish no earlier than 2026-09-08 | Arquitecto 1 | 16h | 16h | 304,368 | 304,368 |
| 16 | 2.6 | Diseño de base de datos | 4d | 2026-09-09 A | 2026-09-14 A |  | 100% |  |  | finish no earlier than 2026-09-14 | Arquitecto 1 | 32h | 32h | 608,736 | 608,736 |
| 17 | 2.7 | Diseño de interfaces / prototipo | 6d | 2026-09-15 A | 2026-09-21 |  | 33% | 4d | 50d | finish no earlier than 2026-09-21 | Arquitecto 2 | 48h | 16h | 913,104 | 304,368 |
| 18 | 3 | **DESARROLLO** | 32d | 2026-09-17 | 2026-10-29 |  |  |  | 22d |  | PROJECT MANAGER | 552h |  | 15,052,600 |  |
| 19 | 3.1 | Configuración del entorno | 1d | 2026-09-17 | 2026-09-17 |  |  |  | 53d |  | Desarrollador Backend; Desarrollador Frontend | 16h |  | 332,040 |  |
| 20 | 3.2 | Desarrollo de base de datos | 3d | 2026-10-05 | 2026-10-07 |  |  |  | 38d | finish no earlier than 2026-10-07 | Desarrollador Backend | 24h |  | 553,392 |  |
| 21 | 3.3 | Desarrollo Backend | 7d | 2026-10-08 | 2026-10-16 |  |  |  | 31d | finish no earlier than 2026-10-16 | Desarrollador Backend | 56h |  | 1,291,248 |  |
| 22 | 3.4 | Desarrollo Frontend | 7d | 2026-10-08 | 2026-10-16 |  |  |  | 31d | finish no earlier than 2026-10-16 | Desarrollador Frontend | 56h |  | 1,033,032 |  |
| 23 | 3.5 | Integración Backend + Frontend | 4d | 2026-10-19 | 2026-10-22 |  |  |  | 27d | finish no earlier than 2026-10-22 | Desarrollador Backend; Desarrollador Frontend | 64h |  | 1,328,160 |  |
| 24 | 3.6 | Implementación de funcionalidades | 5d | 2026-10-23 | 2026-10-29 |  |  |  | 22d | finish no earlier than 2026-10-29 | Desarrollador Backend; Desarrollador Frontend | 80h |  | 1,660,200 |  |

| ID | WBS | Task | Duration | Start | Finish | Total slack | Constraint | Resources | Work | Cost |
| --- | --- | --- | --- | --- | --- | --- | --- | --- | --- | --- |
| 25 | 4 | **PRUEBAS** | 12d | 2026-10-30 | 2026-11-16 | 10d |  | Coordinador del proyecto | 240h | 5,469,472 |
| 26 | 4.1 | Diseño de casos de prueba | 2d | 2026-10-30 | 2026-11-02 | 20d | start no earlier than 2026-10-30 | Tester | 16h | 322,816 |
| 27 | 4.2 | Pruebas unitarias | 2d | 2026-11-03 | 2026-11-04 | 18d | finish no earlier than 2026-11-04 | Desarrollador Backend; Desarrollador Frontend | 32h | 664,080 |
| 28 | 4.3 | Pruebas de integración | 2d | 2026-11-05 | 2026-11-06 | 16d | finish no earlier than 2026-11-06 | Tester | 16h | 322,816 |
| 29 | 4.4 | Pruebas funcionales | 2d | 2026-11-09 | 2026-11-10 | 14d | finish no earlier than 2026-11-10 | Tester | 16h | 322,816 |
| 30 | 4.5 | Pruebas de rendimiento | 1d | 2026-11-11 | 2026-11-11 | 13d | start no earlier than 2026-11-11 | Tester; Arquitecto 1 | 16h | 313,592 |
| 31 | 4.6 | Corrección de errores | 2d | 2026-11-12 | 2026-11-13 | 11d | finish no earlier than 2026-11-13 | Desarrollador Backend; Desarrollador Frontend | 32h | 664,080 |
| 32 | 4.7 | Validación con usuarios | 1d | 2026-11-16 | 2026-11-16 | 10d | start no earlier than 2026-11-16 | Coordinador del proyecto; Tester | 16h | 368,936 |
| 33 | 5 | **DESPLIEGUE** | 10d | 2026-11-17 | 2026-11-30 |  |  | PROJECT MANAGER | 208h | 5,695,448 |
| 34 | 5.1 | Configuración del servidor | 1d | 2026-11-17 | 2026-11-17 | 9d |  | Arquitecto 1 | 8h | 152,184 |
| 35 | 5.2 | Configuración de base de datos | 1d | 2026-11-18 | 2026-11-18 | 8d | start no earlier than 2026-11-18 | Desarrollador Backend | 8h | 184,464 |
| 36 | 5.3 | Configuración Backend | 1d | 2026-11-19 | 2026-11-19 | 7d | start no earlier than 2026-11-19 | Desarrollador Backend | 8h | 184,464 |
| 37 | 5.4 | Configuración Frontend | 1d | 2026-11-20 | 2026-11-20 | 6d | start no earlier than 2026-11-20 | Desarrollador Frontend | 8h | 147,576 |
| 38 | 5.5 | Integración y publicación | 2d | 2026-11-23 | 2026-11-24 | 4d | finish no earlier than 2026-11-24 | Arquitecto 1; Desarrollador Backend | 32h | 673,296 |
| 39 | 5.6 | Verificación en producción | 1d | 2026-11-25 | 2026-11-25 | 3d | start no earlier than 2026-11-25 | Tester; PROJECT MANAGER | 16h | 438,112 |
| 40 | 5.7 | Ajustes finales | 2d | 2026-11-26 | 2026-11-27 | 1d | finish no earlier than 2026-11-27 | Desarrollador Backend; Desarrollador Frontend | 32h | 664,080 |
| 41 | 5.8 | Entrega del proyecto | 1d | 2026-11-30 | 2026-11-30 | 0d | start no earlier than 2026-11-30 | PROJECT MANAGER; Coordinador del proyecto | 16h | 484,232 |
